# ElabNewUI

Schedule from GanttProject, 2009-02-10 to 2009-05-06, baseline: Guardar_2.
Linkare TI

## Calendars

- Project calendar: Mon-Fri working; Sat-Sun off.

## Schedule

| ID | WBS | Task | Duration | Start | Finish | Predecessors | Complete | Baseline start | Baseline finish | Baseline duration | Baseline 1 start | Baseline 1 finish |
| --- | --- | --- | --- | --- | --- | --- | --- | --- | --- | --- | --- | --- |
| 1 | 1 | **Desenvolvimento da nova interface do ELab** | 54d | 2009-02-10 | 2009-04-24 |  | 13% | 2009-02-10 | 2009-04-17 | 49d | 2009-02-10 | 2009-04-24 |
| 2 | 1.1 | ELabLAF - UIManager Defaults | 4d | 2009-02-10 | 2009-02-13 |  | 50% | 2009-02-10 | 2009-02-13 | 4d | 2009-02-10 | 2009-02-13 |
| 3 | 1.2 | Configuração ReCBaseUI Especifica | 4d | 2009-02-16 | 2009-02-19 | 2 | 50% | 2009-02-16 | 2009-02-19 | 4d | 2009-02-16 | 2009-02-19 |
| 4 | 1.3 | AboutDialog | 1d | 2009-02-20 | 2009-02-20 | 3 | 50% | 2009-02-16 | 2009-02-16 | 1d | 2009-02-20 | 2009-02-20 |
| 5 | 1.4 | SplashScreen | 1d | 2009-02-23 | 2009-02-23 | 4 | 49% | 2009-02-16 | 2009-02-16 | 1d | 2009-02-23 | 2009-02-23 |
| 6 | 1.5 | **MenuBar** | 3d | 2009-02-24 | 2009-02-26 |  | 50% | 2009-02-17 | 2009-02-19 | 3d | 2009-02-24 | 2009-02-26 |
| 7 | 1.5.1 | MenuBarUI | 1d | 2009-02-24 | 2009-02-24 | 5 | 50% | 2009-02-17 | 2009-02-17 | 1d | 2009-02-24 | 2009-02-24 |
| 8 | 1.5.2 | MenuUI | 1d | 2009-02-25 | 2009-02-25 | 7 | 50% | 2009-02-18 | 2009-02-18 | 1d | 2009-02-25 | 2009-02-25 |
| 9 | 1.5.3 | MenuItemUI | 1d | 2009-02-25 | 2009-02-25 | 8SS | 50% | 2009-02-18 | 2009-02-18 | 1d | 2009-02-25 | 2009-02-25 |
| 10 | 1.5.4 | Estado e eventos | 1d | 2009-02-26 | 2009-02-26 | 9 | 53% | 2009-02-19 | 2009-02-19 | 1d | 2009-02-26 | 2009-02-26 |
| 11 | 1.6 | **ToolBar** | 1d | 2009-02-27 | 2009-02-27 |  | 33% | 2009-02-20 | 2009-02-20 | 1d | 2009-02-27 | 2009-02-27 |
| 12 | 1.6.1 | ToolBarUI | 1d | 2009-02-27 | 2009-02-27 | 10 | 50% | 2009-02-20 | 2009-02-20 | 1d | 2009-02-27 | 2009-02-27 |
| 13 | 1.6.2 | ToggleImageButton (Login/Logoff) | 1d | 2009-02-27 | 2009-02-27 | 12SS | 50% | 2009-02-20 | 2009-02-20 | 1d | 2009-02-27 | 2009-02-27 |
| 14 | 1.7 | **LoginPane** | 4d | 2009-03-02 | 2009-03-05 |  |  | 2009-02-23 | 2009-02-26 | 4d | 2009-03-02 | 2009-03-05 |
| 15 | 1.7.1 | GlassPane com Semi-transparência | 1d | 2009-03-02 | 2009-03-02 |  |  | 2009-02-23 | 2009-02-23 | 1d | 2009-03-02 | 2009-03-02 |
| 16 | 1.7.2 | BackgroundImagePane | 1d | 2009-03-02 | 2009-03-02 | 15SS |  | 2009-02-23 | 2009-02-23 | 1d | 2009-03-02 | 2009-03-02 |
| 17 | 1.7.3 | FlatTextField/TextUI | 1d | 2009-03-03 | 2009-03-03 | 16 |  | 2009-02-24 | 2009-02-24 | 1d | 2009-03-03 | 2009-03-03 |
| 18 | 1.7.4 | ImageButton (Ex: Login Avançar) | 1d | 2009-03-03 | 2009-03-03 | 17SS |  | 2009-02-24 | 2009-02-24 | 1d | 2009-03-03 | 2009-03-03 |
| 19 | 1.7.5 | **FlatCombo** | 2d | 2009-03-04 | 2009-03-05 |  |  | 2009-02-25 | 2009-02-26 | 2d | 2009-03-04 | 2009-03-05 |
| 20 | 1.7.5.1 | ComboBoxUI | 2d | 2009-03-04 | 2009-03-05 | 18 |  | 2009-02-25 | 2009-02-26 | 2d | 2009-03-04 | 2009-03-05 |
| 21 | 1.8 | **LeftPane** | 10d | 2009-03-06 | 2009-03-19 |  |  | 2009-02-27 | 2009-03-12 | 10d | 2009-03-06 | 2009-03-19 |
| 22 | 1.8.1 | **ApparatusCombo** | 3d | 2009-03-06 | 2009-03-10 |  |  | 2009-02-27 | 2009-03-03 | 3d | 2009-03-06 | 2009-03-10 |
| 23 | 1.8.1.1 | ApparatusCellRenderer | 2d | 2009-03-06 | 2009-03-09 | 20 |  | 2009-02-27 | 2009-03-02 | 2d | 2009-03-06 | 2009-03-09 |
| 24 | 1.8.1.2 | Eventos | 1d | 2009-03-10 | 2009-03-10 | 23 |  | 2009-03-03 | 2009-03-03 | 1d | 2009-03-10 | 2009-03-10 |
| 25 | 1.8.2 | ImageToggleButton (Entrar-Sair) | 1d | 2009-03-11 | 2009-03-11 | 24 |  | 2009-03-04 | 2009-03-04 | 1d | 2009-03-11 | 2009-03-11 |
| 26 | 1.8.3 | LinkButton (Histórico) | 1d | 2009-03-11 | 2009-03-11 | 25SS |  | 2009-03-04 | 2009-03-04 | 1d | 2009-03-11 | 2009-03-11 |
| 27 | 1.8.4 | TimeLeftClock | 2d | 2009-03-12 | 2009-03-13 | 26 |  | 2009-03-05 | 2009-03-06 | 2d | 2009-03-12 | 2009-03-13 |

| ID | WBS | Task | Duration | Start | Finish | Predecessors | Baseline start | Baseline finish | Baseline duration | Baseline 1 start | Baseline 1 finish |
| --- | --- | --- | --- | --- | --- | --- | --- | --- | --- | --- | --- |
| 28 | 1.8.5 | **ExperimentHistory** | 4d | 2009-03-16 | 2009-03-19 |  | 2009-03-09 | 2009-03-12 | 4d | 2009-03-16 | 2009-03-19 |
| 29 | 1.8.5.1 | ListUI | 1d | 2009-03-16 | 2009-03-16 | 27 | 2009-03-09 | 2009-03-09 | 1d | 2009-03-16 | 2009-03-16 |
| 30 | 1.8.5.2 | ScrollBarUI | 1d | 2009-03-16 | 2009-03-16 | 29SS | 2009-03-09 | 2009-03-09 | 1d | 2009-03-16 | 2009-03-16 |
| 31 | 1.8.5.3 | ExperimentCellRenderer | 2d | 2009-03-17 | 2009-03-18 | 30 | 2009-03-10 | 2009-03-11 | 2d | 2009-03-17 | 2009-03-18 |
| 32 | 1.8.5.4 | Eventos | 1d | 2009-03-19 | 2009-03-19 | 31 | 2009-03-12 | 2009-03-12 | 1d | 2009-03-19 | 2009-03-19 |
| 33 | 1.9 | **CenterPane** | 18d | 2009-03-20 | 2009-04-14 | 32 | 2009-03-13 | 2009-04-07 | 18d | 2009-03-20 | 2009-04-14 |
| 34 | 1.9.1 | **ControllerActionPane** | 3d | 2009-03-20 | 2009-03-24 |  | 2009-03-13 | 2009-03-17 | 3d | 2009-03-20 | 2009-03-24 |
| 35 | 1.9.1.1 | GlassToolTip | 1d | 2009-03-20 | 2009-03-20 | 32, 59 | 2009-03-13 | 2009-03-13 | 1d | 2009-03-20 | 2009-03-20 |
| 36 | 1.9.1.2 | ImageToggleButton Play/Stop | 1d | 2009-03-20 | 2009-03-20 | 35SS | 2009-03-13 | 2009-03-13 | 1d | 2009-03-20 | 2009-03-20 |
| 37 | 1.9.1.3 | Auto-play CheckBox | 1d | 2009-03-20 | 2009-03-20 | 36SS | 2009-03-13 | 2009-03-13 | 1d | 2009-03-20 | 2009-03-20 |
| 38 | 1.9.1.4 | Color Info Label | 1d | 2009-03-23 | 2009-03-23 | 37 | 2009-03-16 | 2009-03-16 | 1d | 2009-03-23 | 2009-03-23 |
| 39 | 1.9.1.5 | Estado e Eventos | 1d | 2009-03-24 | 2009-03-24 | 38 | 2009-03-17 | 2009-03-17 | 1d | 2009-03-24 | 2009-03-24 |
| 40 | 1.9.2 | **ExperienceTabPane** | 15d | 2009-03-25 | 2009-04-14 |  | 2009-03-18 | 2009-04-07 | 15d | 2009-03-25 | 2009-04-14 |
| 41 | 1.9.2.1 | TabbedPaneUI | 2d | 2009-03-25 | 2009-03-26 | 39 | 2009-03-18 | 2009-03-19 | 2d | 2009-03-25 | 2009-03-26 |
| 42 | 1.9.2.2 | DescriptionPane | 1d | 2009-03-27 | 2009-03-27 | 41 | 2009-03-20 | 2009-03-20 | 1d | 2009-03-27 | 2009-03-27 |
| 43 | 1.9.2.3 | **CustomizerPane** | 4d | 2009-03-30 | 2009-04-02 |  | 2009-03-23 | 2009-03-26 | 4d | 2009-03-30 | 2009-04-02 |
| 44 | 1.9.2.3.1 | SliderUI | 1d | 2009-03-30 | 2009-03-30 | 42 | 2009-03-23 | 2009-03-23 | 1d | 2009-03-30 | 2009-03-30 |
| 45 | 1.9.2.3.2 | BasicRadioButtonUI | 1d | 2009-03-31 | 2009-03-31 | 44 | 2009-03-24 | 2009-03-24 | 1d | 2009-03-31 | 2009-03-31 |
| 46 | 1.9.2.3.3 | BasicCheckBoxUI | 1d | 2009-04-01 | 2009-04-01 | 45 | 2009-03-25 | 2009-03-25 | 1d | 2009-04-01 | 2009-04-01 |
| 47 | 1.9.2.3.4 | ButtonUI | 1d | 2009-04-02 | 2009-04-02 | 46 | 2009-03-26 | 2009-03-26 | 1d | 2009-04-02 | 2009-04-02 |
| 48 | 1.9.2.3.5 | BasicToggleButtonUI | 1d | 2009-04-02 | 2009-04-02 | 47SS | 2009-03-26 | 2009-03-26 | 1d | 2009-04-02 | 2009-04-02 |
| 49 | 1.9.2.4 | **ResultsPane** | 6d | 2009-04-03 | 2009-04-10 |  | 2009-03-27 | 2009-04-03 | 6d | 2009-04-03 | 2009-04-10 |
| 50 | 1.9.2.4.1 | ResultDisplaysCombo | 1d | 2009-04-03 | 2009-04-03 | 48 | 2009-03-27 | 2009-03-27 | 1d | 2009-04-03 | 2009-04-03 |
| 51 | 1.9.2.4.2 | SensorDisplayPane | 1d | 2009-04-06 | 2009-04-06 | 50 | 2009-03-30 | 2009-03-30 | 1d | 2009-04-06 | 2009-04-06 |

| ID | WBS | Task | Duration | Start | Finish | Predecessors | Baseline start | Baseline finish | Baseline duration | Baseline 1 start | Baseline 1 finish |
| --- | --- | --- | --- | --- | --- | --- | --- | --- | --- | --- | --- |
| 52 | 1.9.2.4.3 | **ResultsDataTable** | 3d | 2009-04-07 | 2009-04-09 |  | 2009-03-31 | 2009-04-02 | 3d | 2009-04-07 | 2009-04-09 |
| 53 | 1.9.2.4.3.1 | TableUI | 2d | 2009-04-07 | 2009-04-08 | 51 | 2009-03-31 | 2009-04-01 | 2d | 2009-04-07 | 2009-04-08 |
| 54 | 1.9.2.4.3.2 | TableHeaderUI | 1d | 2009-04-09 | 2009-04-09 | 53 | 2009-04-02 | 2009-04-02 | 1d | 2009-04-09 | 2009-04-09 |
| 55 | 1.9.2.4.4 | ExperimentInfoPane | 1d | 2009-04-10 | 2009-04-10 | 54 | 2009-04-03 | 2009-04-03 | 1d | 2009-04-10 | 2009-04-10 |
| 56 | 1.9.2.5 | UserPane (Table/List?) | 2d | 2009-04-13 | 2009-04-14 | 55 | 2009-04-06 | 2009-04-07 | 2d | 2009-04-13 | 2009-04-14 |
| 57 | 1.10 | **RighMediaPane** | 7d | 2009-03-05 | 2009-03-13 |  | 2009-04-08 | 2009-04-10 | 3d | 2009-04-15 | 2009-04-17 |
| 58 | 1.10.1 | LiveChatPane | 6d | 2009-03-05 | 2009-03-12 |  | 2009-04-09 | 2009-04-10 | 2d | 2009-04-16 | 2009-04-17 |
| 59 | 1.10.2 | LiveVideoPane - Mock | 1d | 2009-03-13 | 2009-03-13 | 58 | 2009-04-08 | 2009-04-08 | 1d | 2009-04-15 | 2009-04-15 |
| 60 | 1.11 | Mensagens e tooltips da aplicação | 2d | 2009-04-15 | 2009-04-16 |  | 2009-04-13 | 2009-04-13 | 1d | 2009-04-20 | 2009-04-20 |
| 61 | 1.12 | **ELabBaseUI - Frame** | 6d | 2009-04-17 | 2009-04-24 |  | 2009-04-14 | 2009-04-17 | 4d | 2009-04-21 | 2009-04-24 |
| 62 | 1.12.1 | Integração dos componentes | 3d | 2009-04-17 | 2009-04-21 |  | 2009-04-14 | 2009-04-14 | 1d | 2009-04-21 | 2009-04-21 |
| 63 | 1.12.2 | Eventos Globais | 3d | 2009-04-22 | 2009-04-24 | 62 | 2009-04-15 | 2009-04-17 | 3d | 2009-04-22 | 2009-04-24 |
| 64 | 2 | Tarefas inacabadas | 8d | 2009-04-27 | 2009-05-06 |  |  |  |  |  |  |
